# KMS

Schedule from MS Project, 2022-01-20 to 2022-05-31, status date 2022-04-04, 4 hours a day, costs in Q, A marks actual dates.

## Calendars

- KMS_Project: Mon-Fri 16:00-20:00; Sat 09:00-13:00; Sun off.

## Resources

| Resource | Group | Rate |
| --- | --- | --- |
| Erick Quijivix | AS2 | 100 |
| Erick Quijivix |  | 100 |
| Julio Paiz |  | 100 |

## Schedule

| ID | WBS | Task | Duration | Start | Finish | Predecessors | Complete | Remaining | Baseline start | Baseline finish | Baseline duration | Total slack | Free slack | Constraint | Resources | Work | Actual work | Cost | Baseline cost | Actual cost | EDT | EACT | EACT_ |
| --- | --- | --- | --- | --- | --- | --- | --- | --- | --- | --- | --- | --- | --- | --- | --- | --- | --- | --- | --- | --- | --- | --- | --- |
| 1 | 1 | **Planeación** | 51.75d | 2022-01-20 A | 2022-03-21 A |  | 100% |  | 2022-01-20 | 2022-03-21 | 51.75d |  |  |  |  | 395h | 395h | 17,500 | 16,000 | 17,500 |  |  |  |
| 2 | 1.1 | Caso de Negocio | 15d | 2022-01-20 A | 2022-02-09 A |  | 100% |  | 2022-01-20 | 2022-02-09 | 15d |  |  |  | Erick Quijivix | 60h | 60h | 3,000 | 2,666.66 | 3,000 | 3600 | 3600 | 3600 |
| 3 | 1.2 | Acta de Constitución | 15d | 2022-01-20 A | 2022-02-03 A | 2SS | 100% |  | 2022-01-20 | 2022-02-03 | 15d |  |  |  | Julio Paiz | 60h | 60h | 3,000 | 2,666.67 | 3,000 | 3600 | 3600 | 3600 |
| 4 | 1.3 | Enunciado del Alcance | 15d | 2022-01-20 A | 2022-02-10 A | 3SS | 100% |  | 2022-01-20 | 2022-02-10 | 15d |  |  |  | Erick Quijivix | 60h | 60h | 3,000 | 2,666.66 | 3,000 | 3600 | 3600 | 3600 |
| 5 | 1.4 | EDT | 21d | 2022-02-10 A | 2022-03-02 A | 4 | 100% |  | 2022-02-10 | 2022-03-02 | 21d |  |  |  | Julio Paiz | 84h | 84h | 3,000 | 2,666.67 | 3,000 | 5040 | 5040 | 5040 |
| 6 | 1.5 | Matriz de Riesgos | 21d | 2022-02-10 A | 2022-03-11 A | 5 | 100% |  | 2022-02-10 | 2022-03-11 | 21d |  |  | start no earlier than 2022-01-30 | Erick Quijivix | 84h | 84h | 3,000 | 2,666.67 | 3,000 | 5040 | 5040 | 5040 |
| 7 | 1.6 | 2 Reuniones con IUNGO | 1d | 2022-02-17 A | 2022-02-17 A | 6 | 100% |  |  |  |  |  |  | start no earlier than 2022-02-17 | Erick Quijivix; Julio Paiz | 7h | 7h |  |  |  |  |  |  |
| 8 | 1.7 | Valor Ganado | 10d | 2022-03-11 A | 2022-03-21 A | 7 | 100% |  | 2022-03-11 | 2022-03-21 | 10d |  |  | start no earlier than 2022-03-11 | Julio Paiz | 40h | 40h | 2,500 | 2,666.67 | 2,500 | 2400 | 2400 | 2400 |
| 9 | 2 | **Diseño** | 17.25d | 2022-03-21 A | 2022-04-11 A |  | 100% |  | 2022-03-21 | 2022-04-08 | 15.75d |  |  |  |  | 104h | 104h | 18,200 | 18,000 | 18,200 |  |  |  |
| 10 | 2.1 | Diseño de Base de Datos | 5.75d | 2022-03-21 A | 2022-03-25 A | 8 | 100% |  | 2022-03-21 | 2022-03-25 | 5.75d |  |  |  | Erick Quijivix; Julio Paiz | 32h | 32h | 3,600 | 3,600 | 3,600 | 1380 | 1380 | 1380 |
| 11 | 2.2 | Casos de uso | 4d | 2022-03-25 A | 2022-03-29 A | 10 | 100% |  | 2022-03-25 | 2022-03-29 | 4d |  |  |  | Julio Paiz | 16h | 16h | 3,600 | 3,600 | 3,600 | 960 | 960 | 960 |
| 12 | 2.3 | Diagramas de clase | 4d | 2022-03-28 A | 2022-03-31 A | 11SS | 100% |  | 2022-03-28 | 2022-03-31 | 4d |  |  |  | Erick Quijivix | 16h | 16h | 3,600 | 3,600 | 3,600 | 960 | 960 | 960 |
| 13 | 2.4 | Diagramas de componentes | 4d | 2022-03-31 A | 2022-04-04 A | 12 | 100% |  | 2022-03-31 | 2022-04-04 | 4d |  |  |  | Julio Paiz | 16h | 16h | 3,600 | 3,600 | 3,600 | 960 | 960 | 960 |
| 14 | 2.5 | Interfaz de usuario | 4d | 2022-04-05 A | 2022-04-08 A | 13 | 100% |  | 2022-04-05 | 2022-04-08 | 4d |  |  |  | Julio Paiz; Erick Quijivix | 16h | 16h | 3,600 | 3,600 | 3,600 |  |  |  |
| 15 | 2.6 | Reunión con IUNGO | 1.25d | 2022-04-08 A | 2022-04-11 A | 14SS | 100% |  |  |  |  |  |  | start no earlier than 2022-04-08 | Erick Quijivix; Julio Paiz | 8h | 8h | 200 | 200 | 200 |  |  |  |
| 16 | 3 | **Desarrollo** | 43.75d | 2022-04-11 A | 2022-05-31 | 14 | 7% | 40.54d | 2022-04-08 | 2022-05-23 | 37.5d | 0d |  |  |  | 604h | 47.58h | 95,162.17 | 16,000 | 4,000 |  |  |  |
| 17 | 3.1 | **Instalación de Base de datos en Oracle Express** | 7.75d | 2022-04-11 A | 2022-04-19 | 14 | 59% | 3.15d | 2022-04-08 | 2022-04-15 | 8.25d | 0.25d |  |  | Erick Quijivix; Julio Paiz | 80h | 47.58h | 11,882.17 | 4,000 | 4,000 |  |  |  |
| 18 | 3.1.1 | Diseño lógico en oracle datamodeler | 4.75d | 2022-04-11 A | 2022-04-13 A | 15 | 100% |  |  |  |  |  |  |  | Erick Quijivix; Julio Paiz | 24h | 24h | 1,000 |  | 1,000 |  |  |  |
| 19 | 3.1.2 | Diseño relacional en Oracle datamodeler | 1d | 2022-04-13 A | 2022-04-14 | 18 |  | 1d |  |  |  | 0d |  |  | Erick Quijivix; Julio Paiz | 6h |  | 2,600 |  | 1,000 |  |  |  |
| 20 | 3.1.3 | Generación de script SQL | 1.25d | 2022-04-13 A | 2022-04-15 | 19 |  | 1.25d |  |  |  | 2.5d |  |  | Erick Quijivix; Julio Paiz | 6h |  | 2,600 |  | 1,000 |  |  |  |
| 21 | 3.1.4 | Instalación de Base de Datos XE en los equipos de desarrollo | 1d | 2022-04-18 A | 2022-04-19 | 20 |  | 1d |  |  |  | 0.25d | 0d |  | Erick Quijivix; Julio Paiz | 6h |  | 2,600 |  | 1,000 |  |  |  |
| 22 | 3.2 | **Desarrollo de los módulos del sistema** | 35d | 2022-04-19 | 2022-05-30 | 21 |  |  | 2022-04-15 | 2022-05-02 | 20.25d | 0.25d |  |  | Erick Quijivix; Julio Paiz | 457h |  | 53,700 | 4,000 |  |  |  |  |
| 23 | 3.2.1 | Generar procedimientos, funciones y vistas | 3d | 2022-04-19 | 2022-04-21 | 21 |  |  |  |  |  | 0.25d | 0d |  | Erick Quijivix; Julio Paiz | 16h |  | 2,600 |  |  |  |  |  |
| 24 | 3.2.2 | Generar restricciones | 1d | 2022-04-21 | 2022-04-22 | 23 |  |  |  |  |  | 0.25d | 0d |  | Erick Quijivix; Julio Paiz | 4h |  | 1,400 |  |  |  |  |  |
| 25 | 3.2.3 | Desarrollo de mantenimientos | 21.75d | 2022-04-22 | 2022-05-13 | 24 |  |  |  |  |  | 0.25d | 0d |  | Erick Quijivix; Julio Paiz | 87h |  | 9,700 |  |  |  |  |  |
| 26 | 3.2.4 | Desarrollo de procesos | 17d | 2022-05-13 | 2022-05-30 | 25 |  |  |  |  |  | 0.25d | 0d |  | Erick Quijivix; Julio Paiz | 68h |  | 7,800 |  |  |  |  |  |
| 27 | 3.3 | Integración de los módulos | 9.25d | 2022-05-13 | 2022-05-23 | 25 |  |  | 2022-05-02 | 2022-05-17 | 20d | 3.25d | 0d |  | Erick Quijivix; Julio Paiz | 44h |  | 8,400 | 4,000 |  |  |  |  |
| 28 | 3.4 | Reunión con IUNGO | 1.5d | 2022-05-30 | 2022-05-31 | 26 |  |  |  |  |  | 0d |  |  | Erick Quijivix; Julio Paiz | 7h |  | 700 |  |  |  |  |  |
| 29 | 3.5 | Realizar pruebas | 3.25d | 2022-05-23 | 2022-05-25 | 27 |  |  | 2022-05-17 | 2022-05-23 | 6.5d | 3d | 0d |  | Erick Quijivix; Julio Paiz | 16h |  | 5,600 | 4,000 |  |  |  |  |
| 30 | 4 | Entrega | 2.5d | 2022-05-25 | 2022-05-27 | 29 |  |  | 2022-05-30 | 2022-06-01 | 2.5d | 3d |  |  |  |  |  |  |  |  |  |  |  |
